# 东科 Vth -1V

Schedule from a web Gantt chart, 2025-09-29 to 2026-01-30.
Saturdays and Sundays are off

## Schedule

| ID | WBS | Task | Duration | Start | Finish | Predecessors | Complete | Status |
| --- | --- | --- | --- | --- | --- | --- | --- | --- |
| 3 | 1 | kick-off | 1d | 2025-09-29 | 2025-09-29 |  | 100% |  |
| 4 | 2 | 项目立项会议 | 1d | 2025-10-13 | 2025-10-13 |  |  |  |
| 5 | 3 | 1st LC lot W/S | 30d | 2025-10-15 | 2025-11-25 |  |  |  |
| 6 | 4 | 1st LC lot F/O | 3d | 2025-11-26 | 2025-11-28 | 5 |  | waiting |
| 7 | 5 | 1st LC lot samples | 45d | 2025-12-01 | 2026-01-30 | 6 |  | waiting |
| 8 | 6 | RE | 1d | 2025-09-29 | 2025-09-29 |  |  |  |
